# Tailspin Remote Drone 2

How a schedule from MS Project changed from version to version. A marks actual dates.

## Version 1 (saved 2018-09-13, file Tailspin Remote Drone 2.mpp)

| ID | WBS | Task | Duration | Start | Finish | Predecessors | Total float |
| --- | --- | --- | --- | --- | --- | --- | --- |
| 1 | 1 | **Target Market Research and Analysis** | 29.75d | 2019-01-07 | 2019-02-18 |  | 0d |
| 2 | 1.1 | **Research** | 20.75d | 2019-01-07 | 2019-02-05 |  | 0d |
| 3 |  | Research begins | 0d | 2019-01-07 | 2019-01-07 |  | 0d |
| 4 | 1.1.2 | **Surveys** | 8.12d | 2019-01-07 | 2019-01-17 |  | 0d |
| 5 |  | Develop survey questionnaire | 3d | 2019-01-07 | 2019-01-09 | 3 | 0d |
| 6 |  | Review and approval of survey | 1h | 2019-01-10 | 2019-01-10 | 5 | 0d |
| 7 |  | Conduct survey | 1w | 2019-01-10 | 2019-01-17 | 6 | 36.62d |
| 8 | 1.1.3 | **Focus Groups** | 12d | 2019-01-10 | 2019-01-29 |  | 0d |
| 9 |  | Identify focus group member demographics | 2d | 2019-01-10 | 2019-01-14 | 6 | 0d |
| 10 |  | Contact potential focus group members | 5d | 2019-01-14 | 2019-01-22 | 9 | 0d |
| 11 |  | Conduct focus groups | 1w | 2019-01-22 | 2019-01-29 | 10 | 0d |
| 12 | 1.1.4 | **Observations** | 5.62d | 2019-01-29 | 2019-02-05 |  | 0d |
| 13 |  | Identify observation parameters | 4h | 2019-01-29 | 2019-01-29 | 11 | 0d |
| 14 |  | Select observation locations | 1h | 2019-01-29 | 2019-01-29 | 13 | 0d |
| 15 |  | Conduct observations | 1w | 2019-01-29 | 2019-02-05 | 14 | 0d |
| 16 |  | Research complete | 0d | 2019-02-05 | 2019-02-05 | 15 | 24d |
| 17 | 1.2 | **Analysis** | 14d | 2019-01-29 | 2019-02-18 |  | 0d |
| 18 |  | Analysis begins | 0d | 2019-01-29 | 2019-01-29 | 15SS | 0d |
| 19 | 1.2.2 | **Analysis of Research Data** | 8d | 2019-01-29 | 2019-02-08 |  | 0d |
| 20 |  | Analyze surveys, focus groups, and observations | 2d | 2019-01-29 | 2019-01-31 | 18 | 0d |
| 21 |  | Create follow up actions for secondary research | 1d | 2019-01-31 | 2019-02-01 | 20 | 0d |
| 22 |  | Conduct secondary research | 1w | 2019-02-01 | 2019-02-08 | 21 | 0d |
| 23 | 1.2.3 | **Report of Research Findings** | 7d | 2019-02-07 | 2019-02-18 |  | 0d |
| 24 |  | Compile draft copy of report | 8h | 2019-02-07 | 2019-02-08 | 22FF | 0d |
| 25 |  | Draft copy review period | 5d | 2019-02-08 | 2019-02-15 | 24 | 0d |
| 26 |  | Review comments and compile final report | 1d | 2019-02-15 | 2019-02-18 | 25 | 0d |
| 27 |  | Analysis complete | 0d | 2019-02-18 | 2019-02-18 | 26 | 0d |
| 28 | 2 | **Design** | 4d? | 2019-02-18 | 2019-02-22 |  | 0d |
| 29 |  | Design begins | 0d | 2019-02-18 | 2019-02-18 | 27 | 0d |
| 30 |  | Research Findings Evaluation | 1d? | 2019-02-18 | 2019-02-19 | 29 | 0d |
| 31 |  | Design Document | 1d? | 2019-02-19 | 2019-02-20 | 30 | 0d |
| 32 |  | Proof of Concept | 1d? | 2019-02-20 | 2019-02-21 | 31 | 0d |
| 33 |  | Final Design Selection | 1d? | 2019-02-21 | 2019-02-22 | 32 | 0d |
| 34 |  | Design complete | 0d | 2019-02-22 | 2019-02-22 | 33 | 0d |
| 35 | 3 | **Product Development** | 4d? | 2019-02-22 | 2019-02-28 |  | 0d |
| 36 |  | Product development begins | 0d | 2019-02-22 | 2019-02-22 | 34 | 0d |
| 37 |  | Initial Prototype | 1d? | 2019-02-22 | 2019-02-25 | 36 | 0d |
| 38 |  | Internal Testing | 1d? | 2019-02-25 | 2019-02-26 | 37 | 0d |
| 39 |  | Raw Materials List | 1d? | 2019-02-26 | 2019-02-27 | 38 | 0d |
| 40 |  | Parts Designation | 1d? | 2019-02-27 | 2019-02-28 | 39 | 0d |
| 41 |  | Product development complete | 0d | 2019-02-28 | 2019-02-28 | 40 | 0d |
| 42 | 4 | **Production Planning** | 4d? | 2019-02-28 | 2019-03-06 |  | 0d |
| 43 |  | Production planning begins | 0d | 2019-02-28 | 2019-02-28 | 41 | 0d |
| 44 |  | High-level Production Plan | 1d? | 2019-02-28 | 2019-03-01 | 43 | 0d |
| 45 |  | Resource Planning | 1d? | 2019-03-01 | 2019-03-04 | 44 | 0d |
| 46 |  | Quality Control Design | 1d? | 2019-03-04 | 2019-03-05 | 45 | 0d |
| 47 |  | Final Production Plan Approval | 1d? | 2019-03-05 | 2019-03-06 | 46 | 0d |
| 48 |  | Production planning complete | 0d | 2019-03-06 | 2019-03-06 | 47 | 0d |
| 49 | 5 | **Marketing** | 3d? | 2019-03-06 | 2019-03-11 |  | 0d |
| 50 |  | Marketing phase begins | 0d | 2019-03-06 | 2019-03-06 | 48 | 0d |
| 51 |  | Marketing Strategy Development | 1d? | 2019-03-06 | 2019-03-07 | 50 | 0d |
| 52 |  | Marketing Plan Development and Approval | 1d? | 2019-03-07 | 2019-03-08 | 51 | 0d |
| 53 |  | Marketing Materials | 1d? | 2019-03-08 | 2019-03-11 | 52 | 0d |
| 54 |  | Marketing phase complete | 0d | 2019-03-11 | 2019-03-11 | 53 | 0d |
| 55 |  | Project Management | 1d? | 2019-01-07 | 2019-01-07 |  | 43.75d |

## Version 2 (saved 2018-09-13, file Tailspin Remote Drone 3.mpp)

Last finish 2019-03-11 → 2019-03-07 (-4d).

Changed:

| ID | Task | Start | Finish | Duration | Total float | Other |
| --- | --- | --- | --- | --- | --- | --- |
| 1 | **Target Market Research and Analysis** |  | 2019-02-18 → 2019-02-14 (-4d) | 29.75d → 27.95d |  |  |
| 2 | **Research** |  | 2019-02-05 → 2019-02-01 (-4d) | 20.75d → 18.95d |  |  |
| 4 | **Surveys** |  | 2019-01-17 → 2019-01-15 (-2d) | 8.12d → 6.99d |  |  |
| 5 | Develop survey questionnaire |  | 2019-01-09 → 2019-01-08 (-1d) | 3d → 2.12d |  | resources none → Scott Seely; Jeff Pike; Annette Hill [50%]; Brad Sutton |
| 6 | Review and approval of survey | 2019-01-10 → 2019-01-08 (-2d) | 2019-01-10 → 2019-01-08 (-2d) |  |  | resources none → Jeff Pike |
| 7 | Conduct survey | 2019-01-10 → 2019-01-08 (-2d) | 2019-01-17 → 2019-01-15 (-2d) | 1w → 1.2w | 36.62d → 35.96d | resources none → Scott Seely [57.1%]; Judy Lew [57.1%]; Annette Hill [28.6%]; Ryan Ihrig [57.1%]; Bottled water [2 case] |
| 8 | **Focus Groups** | 2019-01-10 → 2019-01-08 (-2d) | 2019-01-29 → 2019-01-25 (-4d) | 12d → 11.33d |  |  |
| 9 | Identify focus group member demographics | 2019-01-10 → 2019-01-08 (-2d) | 2019-01-14 → 2019-01-10 (-4d) | 2d → 1.33d |  | resources none → Jeff Pike; Yan Li; Brenda Diaz |
| 10 | Contact potential focus group members | 2019-01-14 → 2019-01-10 (-4d) | 2019-01-22 → 2019-01-17 (-5d) |  |  |  |
| 11 | Conduct focus groups | 2019-01-22 → 2019-01-17 (-5d) | 2019-01-29 → 2019-01-25 (-4d) |  |  | resources none → Food [0.1%] |
| 12 | **Observations** | 2019-01-29 → 2019-01-25 (-4d) | 2019-02-05 → 2019-02-01 (-4d) |  |  |  |
| 13 | Identify observation parameters | 2019-01-29 → 2019-01-25 (-4d) | 2019-01-29 → 2019-01-25 (-4d) |  |  |  |
| 14 | Select observation locations | 2019-01-29 → 2019-01-25 (-4d) | 2019-01-29 → 2019-01-25 (-4d) |  |  |  |
| 15 | Conduct observations | 2019-01-29 → 2019-01-25 (-4d) | 2019-02-05 → 2019-02-01 (-4d) |  |  | resources none → Food [0.1%] |
| 16 | Research complete | 2019-02-05 → 2019-02-01 (-4d) | 2019-02-05 → 2019-02-01 (-4d) |  |  |  |
| 17 | **Analysis** | 2019-01-29 → 2019-01-25 (-4d) | 2019-02-18 → 2019-02-14 (-4d) |  |  |  |
| 18 | Analysis begins | 2019-01-29 → 2019-01-25 (-4d) | 2019-01-29 → 2019-01-25 (-4d) |  |  |  |
| 19 | **Analysis of Research Data** | 2019-01-29 → 2019-01-25 (-4d) | 2019-02-08 → 2019-02-06 (-2d) |  |  |  |
| 20 | Analyze surveys, focus groups, and observations | 2019-01-29 → 2019-01-25 (-4d) | 2019-01-31 → 2019-01-29 (-2d) |  |  |  |
| 21 | Create follow up actions for secondary research | 2019-01-31 → 2019-01-29 (-2d) | 2019-02-01 → 2019-01-30 (-2d) |  |  |  |
| 22 | Conduct secondary research | 2019-02-01 → 2019-01-30 (-2d) | 2019-02-08 → 2019-02-06 (-2d) |  |  |  |
| 23 | **Report of Research Findings** | 2019-02-07 → 2019-02-05 (-2d) | 2019-02-18 → 2019-02-14 (-4d) |  |  |  |
| 24 | Compile draft copy of report | 2019-02-07 → 2019-02-05 (-2d) | 2019-02-08 → 2019-02-06 (-2d) |  |  |  |
| 25 | Draft copy review period | 2019-02-08 → 2019-02-06 (-2d) | 2019-02-15 → 2019-02-13 (-2d) |  |  |  |
| 26 | Review comments and compile final report | 2019-02-15 → 2019-02-13 (-2d) | 2019-02-18 → 2019-02-14 (-4d) |  |  |  |
| 27 | Analysis complete | 2019-02-18 → 2019-02-14 (-4d) | 2019-02-18 → 2019-02-14 (-4d) |  |  |  |
| 28 | **Design** | 2019-02-18 → 2019-02-14 (-4d) | 2019-02-22 → 2019-02-20 (-2d) |  |  |  |
| 29 | Design begins | 2019-02-18 → 2019-02-14 (-4d) | 2019-02-18 → 2019-02-14 (-4d) |  |  |  |
| 30 | Research Findings Evaluation | 2019-02-18 → 2019-02-14 (-4d) | 2019-02-19 → 2019-02-15 (-4d) |  |  |  |
| 31 | Design Document | 2019-02-19 → 2019-02-15 (-4d) | 2019-02-20 → 2019-02-18 (-2d) |  |  |  |
| 32 | Proof of Concept | 2019-02-20 → 2019-02-18 (-2d) | 2019-02-21 → 2019-02-19 (-2d) |  |  |  |
| 33 | Final Design Selection | 2019-02-21 → 2019-02-19 (-2d) | 2019-02-22 → 2019-02-20 (-2d) |  |  |  |
| 34 | Design complete | 2019-02-22 → 2019-02-20 (-2d) | 2019-02-22 → 2019-02-20 (-2d) |  |  |  |
| 35 | **Product Development** | 2019-02-22 → 2019-02-20 (-2d) | 2019-02-28 → 2019-02-26 (-2d) |  |  |  |
| 36 | Product development begins | 2019-02-22 → 2019-02-20 (-2d) | 2019-02-22 → 2019-02-20 (-2d) |  |  |  |
| 37 | Initial Prototype | 2019-02-22 → 2019-02-20 (-2d) | 2019-02-25 → 2019-02-21 (-4d) |  |  |  |
| 38 | Internal Testing | 2019-02-25 → 2019-02-21 (-4d) | 2019-02-26 → 2019-02-22 (-4d) |  |  |  |
| 39 | Raw Materials List | 2019-02-26 → 2019-02-22 (-4d) | 2019-02-27 → 2019-02-25 (-2d) |  |  |  |
| 40 | Parts Designation | 2019-02-27 → 2019-02-25 (-2d) | 2019-02-28 → 2019-02-26 (-2d) |  |  |  |
| 41 | Product development complete | 2019-02-28 → 2019-02-26 (-2d) | 2019-02-28 → 2019-02-26 (-2d) |  |  |  |
| 42 | **Production Planning** | 2019-02-28 → 2019-02-26 (-2d) | 2019-03-06 → 2019-03-04 (-2d) |  |  |  |
| 43 | Production planning begins | 2019-02-28 → 2019-02-26 (-2d) | 2019-02-28 → 2019-02-26 (-2d) |  |  |  |
| 44 | High-level Production Plan | 2019-02-28 → 2019-02-26 (-2d) | 2019-03-01 → 2019-02-27 (-2d) |  |  |  |
| 45 | Resource Planning | 2019-03-01 → 2019-02-27 (-2d) | 2019-03-04 → 2019-02-28 (-4d) |  |  |  |
| 46 | Quality Control Design | 2019-03-04 → 2019-02-28 (-4d) | 2019-03-05 → 2019-03-01 (-4d) |  |  |  |
| 47 | Final Production Plan Approval | 2019-03-05 → 2019-03-01 (-4d) | 2019-03-06 → 2019-03-04 (-2d) |  |  |  |
| 48 | Production planning complete | 2019-03-06 → 2019-03-04 (-2d) | 2019-03-06 → 2019-03-04 (-2d) |  |  |  |
| 49 | **Marketing** | 2019-03-06 → 2019-03-04 (-2d) | 2019-03-11 → 2019-03-07 (-4d) |  |  |  |
| 50 | Marketing phase begins | 2019-03-06 → 2019-03-04 (-2d) | 2019-03-06 → 2019-03-04 (-2d) |  |  |  |
| 51 | Marketing Strategy Development | 2019-03-06 → 2019-03-04 (-2d) | 2019-03-07 → 2019-03-05 (-2d) |  |  |  |
| 52 | Marketing Plan Development and Approval | 2019-03-07 → 2019-03-05 (-2d) | 2019-03-08 → 2019-03-06 (-2d) |  |  |  |
| 53 | Marketing Materials | 2019-03-08 → 2019-03-06 (-2d) | 2019-03-11 → 2019-03-07 (-4d) |  |  |  |
| 54 | Marketing phase complete | 2019-03-11 → 2019-03-07 (-4d) | 2019-03-11 → 2019-03-07 (-4d) |  |  |  |

## Version 3 (saved 2018-09-17, file Tailspin Remote Drone 4.mpp)

Last finish 2019-03-07 → 2019-05-22 (+76d).

Added:

| ID | Task | Duration | Start | Finish | Constraint | Resources |
| --- | --- | --- | --- | --- | --- | --- |
| 56 | **Status Meeting** | 94.12d | 2019-01-07 08:00 | 2019-05-20 09:00 |  |  |
| 57 | Status Meeting 1 | 1h | 2019-01-07 08:00 | 2019-01-07 09:00 | start no earlier than 2019-01-07 08:00 | Brad Sutton; Eva Corets; Florian Voss; Jane Clayton; Judy Lew |
| 58 | Status Meeting 2 | 1h | 2019-01-14 08:00 | 2019-01-14 09:00 | start no earlier than 2019-01-14 08:00 | Brad Sutton; Eva Corets; Florian Voss; Jane Clayton; Judy Lew |
| 59 | Status Meeting 3 | 1h | 2019-01-22 08:00 | 2019-01-22 09:00 | start no earlier than 2019-01-21 08:00 | Brad Sutton; Eva Corets; Florian Voss; Jane Clayton; Judy Lew |
| 60 | Status Meeting 4 | 1h | 2019-01-28 08:00 | 2019-01-28 09:00 | start no earlier than 2019-01-28 08:00 | Brad Sutton; Eva Corets; Florian Voss; Jane Clayton; Judy Lew |
| 61 | Status Meeting 5 | 1h | 2019-02-04 08:00 | 2019-02-04 09:00 | start no earlier than 2019-02-04 08:00 | Brad Sutton; Eva Corets; Florian Voss; Jane Clayton; Judy Lew |
| 62 | Status Meeting 6 | 1h | 2019-02-11 08:00 | 2019-02-11 09:00 | start no earlier than 2019-02-11 08:00 | Brad Sutton; Eva Corets; Florian Voss; Jane Clayton; Judy Lew |
| 63 | Status Meeting 7 | 1h | 2019-02-18 08:00 | 2019-02-18 09:00 | start no earlier than 2019-02-18 08:00 | Brad Sutton; Eva Corets; Florian Voss; Jane Clayton; Judy Lew |
| 64 | Status Meeting 8 | 1h | 2019-02-25 08:00 | 2019-02-25 09:00 | start no earlier than 2019-02-25 08:00 | Brad Sutton; Eva Corets; Florian Voss; Jane Clayton; Judy Lew |
| 65 | Status Meeting 9 | 1h | 2019-03-04 08:00 | 2019-03-04 09:00 | start no earlier than 2019-03-04 08:00 | Brad Sutton; Eva Corets; Florian Voss; Jane Clayton; Judy Lew |
| 66 | Status Meeting 10 | 1h | 2019-03-11 08:00 | 2019-03-11 09:00 | start no earlier than 2019-03-11 08:00 | Brad Sutton; Eva Corets; Florian Voss; Jane Clayton; Judy Lew |
| 67 | Status Meeting 11 | 1h | 2019-03-18 08:00 | 2019-03-18 09:00 | start no earlier than 2019-03-18 08:00 | Brad Sutton; Eva Corets; Florian Voss; Jane Clayton; Judy Lew |
| 68 | Status Meeting 12 | 1h | 2019-03-25 08:00 | 2019-03-25 09:00 | start no earlier than 2019-03-25 08:00 | Brad Sutton; Eva Corets; Florian Voss; Jane Clayton; Judy Lew |
| 69 | Status Meeting 13 | 1h | 2019-04-01 08:00 | 2019-04-01 09:00 | start no earlier than 2019-04-01 08:00 | Brad Sutton; Eva Corets; Florian Voss; Jane Clayton; Judy Lew |
| 70 | Status Meeting 14 | 1h | 2019-04-08 08:00 | 2019-04-08 09:00 | start no earlier than 2019-04-08 08:00 | Brad Sutton; Eva Corets; Florian Voss; Jane Clayton; Judy Lew |
| 71 | Status Meeting 15 | 1h | 2019-04-15 08:00 | 2019-04-15 09:00 | start no earlier than 2019-04-15 08:00 | Brad Sutton; Eva Corets; Florian Voss; Jane Clayton; Judy Lew |
| 72 | Status Meeting 16 | 1h | 2019-04-22 08:00 | 2019-04-22 09:00 | start no earlier than 2019-04-22 08:00 | Brad Sutton; Eva Corets; Florian Voss; Jane Clayton; Judy Lew |
| 73 | Status Meeting 17 | 1h | 2019-04-29 08:00 | 2019-04-29 09:00 | start no earlier than 2019-04-29 08:00 | Brad Sutton; Eva Corets; Florian Voss; Jane Clayton; Judy Lew |
| 74 | Status Meeting 18 | 1h | 2019-05-06 08:00 | 2019-05-06 09:00 | start no earlier than 2019-05-06 08:00 | Brad Sutton; Eva Corets; Florian Voss; Jane Clayton; Judy Lew |
| 75 | Status Meeting 19 | 1h | 2019-05-13 08:00 | 2019-05-13 09:00 | start no earlier than 2019-05-13 08:00 | Brad Sutton; Eva Corets; Florian Voss; Jane Clayton; Judy Lew |
| 76 | Status Meeting 20 | 1h | 2019-05-20 08:00 | 2019-05-20 09:00 | start no earlier than 2019-05-20 08:00 | Brad Sutton; Eva Corets; Florian Voss; Jane Clayton; Judy Lew |

Changed:

| ID | Task | Start | Finish | Duration | Total float | Other |
| --- | --- | --- | --- | --- | --- | --- |
| 1 | **Target Market Research and Analysis** | 2019-01-07 → 2019-01-07 08:00 | 2019-02-14 → 2019-02-21 08:32 (+7d) | 27.95d → 32.07d | 0d → 3.33d |  |
| 2 | **Research** | 2019-01-07 → 2019-01-07 08:00 | 2019-02-01 → 2019-02-14 13:56 (+13d) | 18.95d → 27.62d | 0d → 3.33d |  |
| 3 | Research begins | 2019-01-07 → 2019-01-07 08:00 | 2019-01-07 → 2019-01-07 08:00 |  | 0d → 2.38d |  |
| 4 | **Surveys** | 2019-01-07 → 2019-01-07 08:00 | 2019-01-15 → 2019-01-15 16:56 |  | 0d → 3.33d |  |
| 5 | Develop survey questionnaire | 2019-01-07 → 2019-01-07 08:00 | 2019-01-08 → 2019-01-08 15:56 |  | 0d → 2.38d |  |
| 6 | Review and approval of survey | 2019-01-08 → 2019-01-08 15:56 | 2019-01-08 → 2019-01-08 16:56 |  | 0d → 2.38d |  |
| 7 | Conduct survey | 2019-01-08 → 2019-01-08 16:56 | 2019-01-15 → 2019-01-15 16:56 | 1.2w → 1w | 35.96d → 97.01d | resources Scott Seely [57.1%]; Judy Lew [57.1%]; Annette Hill [28.6%]; Ryan Ihrig [57.1%]; Bottled water [2 case] → Judy Lew [57.1%]; Scott Seely [57.1%]; Annette Hill [28.6%]; Ryan Ihrig [57.1%]; Bottled water [2 case] |
| 8 | **Focus Groups** | 2019-01-08 → 2019-01-08 16:56 | 2019-01-25 → 2019-01-30 16:56 (+5d) | 11.33d → 15d | 0d → 3.81d |  |
| 9 | Identify focus group member demographics | 2019-01-08 → 2019-01-08 16:56 | 2019-01-10 → 2019-01-09 16:56 (-1d) | 1.33d → 1d | 0d → 2.38d |  |
| 10 | Contact potential focus group members | 2019-01-10 → 2019-01-09 16:56 (-1d) | 2019-01-17 → 2019-01-16 16:56 (-1d) |  | 0d → 2.38d | resources none → Survey Team Member; Brad Sutton |
| 11 | Conduct focus groups | 2019-01-17 → 2019-01-16 16:56 (-1d) | 2019-01-25 → 2019-01-30 16:56 (+5d) |  | 0d → 2.38d | resources Food [0.1%] → Food [0.1%]; Judy Lew; Annette Hill [50%] |
| 12 | **Observations** | 2019-01-25 → 2019-01-30 16:56 (+5d) | 2019-02-01 → 2019-02-14 13:56 (+13d) | 5.62d → 10.62d | 0d → 3.81d |  |
| 13 | Identify observation parameters | 2019-01-25 → 2019-01-30 16:56 (+5d) | 2019-01-25 → 2019-01-31 11:56 (+6d) |  | 0d → 2.38d | resources none → Brenda Diaz; Brad Sutton |
| 14 | Select observation locations | 2019-01-25 → 2019-01-31 11:56 (+6d) | 2019-01-25 → 2019-01-31 13:56 (+6d) |  | 0d → 2.38d | resources none → Brad Sutton; Brenda Diaz |
| 15 | Conduct observations | 2019-01-25 → 2019-01-31 13:56 (+6d) | 2019-02-01 → 2019-02-14 13:56 (+13d) | 1w → 2w | 0d → 2.38d | resources Food [0.1%] → Food [0.1%]; Jamie Reding [50%]; Jeff Pike [50%]; Judy Lew [50%]; Travel [0.2%] |
| 16 | Research complete | 2019-02-01 → 2019-02-14 13:56 (+13d) | 2019-02-01 → 2019-02-14 13:56 (+13d) |  | 24d → 64.88d |  |
| 17 | **Analysis** | 2019-01-25 → 2019-01-31 13:56 (+6d) | 2019-02-14 → 2019-02-21 08:32 (+7d) | 14d → 14.45d | 0d → 3.68d |  |
| 18 | Analysis begins | 2019-01-25 → 2019-01-31 13:56 (+6d) | 2019-01-25 → 2019-01-31 13:56 (+6d) |  | 0d → 2.38d |  |
| 19 | **Analysis of Research Data** | 2019-01-25 → 2019-01-31 13:56 (+6d) | 2019-02-06 → 2019-02-13 08:32 (+7d) | 8d → 8.45d | 0d → 3.68d |  |
| 20 | Analyze surveys, focus groups, and observations | 2019-01-25 → 2019-01-31 13:56 (+6d) | 2019-01-29 → 2019-02-05 08:32 (+7d) | 2d → 2.95d | 0d → 1.56d | resources none → Jamie Reding; David Barber; Scott Seely; Ryan Ihrig |
| 21 | Create follow up actions for secondary research | 2019-01-29 → 2019-02-05 08:32 (+7d) | 2019-01-30 → 2019-02-06 08:32 (+7d) |  | 0d → 1.56d | resources none → Annette Hill [50%]; Brenda Diaz; Brad Sutton; Eva Corets |
| 22 | Conduct secondary research | 2019-01-30 → 2019-02-06 08:32 (+7d) | 2019-02-06 → 2019-02-13 08:32 (+7d) |  | 0d → 1.56d | resources none → Jeff Pike; Judy Lew |
| 23 | **Report of Research Findings** | 2019-02-05 → 2019-02-12 08:32 (+7d) | 2019-02-14 → 2019-02-21 08:32 (+7d) |  | 0d → 3.68d |  |
| 24 | Compile draft copy of report | 2019-02-05 → 2019-02-12 08:32 (+7d) | 2019-02-06 → 2019-02-13 08:32 (+7d) |  | 0d → 1.56d | resources none → Brenda Diaz |
| 25 | Draft copy review period | 2019-02-06 → 2019-02-13 08:32 (+7d) | 2019-02-13 → 2019-02-20 08:32 (+7d) |  | 0d → 1.56d | resources none → Bjorn Rettig [50%]; Brad Sutton [75%] |
| 26 | Review comments and compile final report | 2019-02-13 → 2019-02-20 08:32 (+7d) | 2019-02-14 → 2019-02-21 08:32 (+7d) |  | 0d → 1.56d | resources none → Brenda Diaz; David Barber; Jamie Reding; Greg Guzik |
| 27 | Analysis complete | 2019-02-14 → 2019-02-21 08:32 (+7d) | 2019-02-14 → 2019-02-21 08:32 (+7d) |  | 0d → 1.56d |  |
| 28 | **Design** | 2019-02-14 → 2019-02-21 08:32 (+7d) | 2019-02-20 → 2019-03-05 10:32 (+13d) | 4d? → 8.25d | 0d → 3.68d |  |
| 29 | Design begins | 2019-02-14 → 2019-02-21 08:32 (+7d) | 2019-02-14 → 2019-02-21 08:32 (+7d) |  | 0d → 1.56d |  |
| 30 | Research Findings Evaluation | 2019-02-14 → 2019-02-21 08:32 (+7d) | 2019-02-15 → 2019-02-22 08:32 (+7d) | 1d? → 1d | 0d → 1.56d | resources none → Jamie Reding; Judy Lew; Maria Hammond; David Barber |
| 31 | Design Document | 2019-02-15 → 2019-02-22 08:32 (+7d) | 2019-02-18 → 2019-02-26 08:32 (+8d) | 1d? → 2d | 0d → 1.56d | resources none → Jamie Reding; Brenda Diaz |
| 32 | Proof of Concept | 2019-02-18 → 2019-02-26 08:32 (+8d) | 2019-02-19 → 2019-03-05 08:32 (+14d) | 1d? → 5d | 0d → 3.68d | resources none → Model technician; Maria Hammond; Greg Guzik |
| 33 | Final Design Selection | 2019-02-19 → 2019-03-05 08:32 (+14d) | 2019-02-20 → 2019-03-05 10:32 (+13d) | 1d? → 2h | 0d → 3.68d | resources none → Frank Zhang; Greg Guzik; Jamie Reding |
| 34 | Design complete | 2019-02-20 → 2019-03-05 10:32 (+13d) | 2019-02-20 → 2019-03-05 10:32 (+13d) |  | 0d → 1.56d |  |
| 35 | **Product Development** | 2019-02-20 → 2019-03-05 10:32 (+13d) | 2019-02-26 → 2019-04-15 17:00 (+48d) | 4d? → 29.68d |  |  |
| 36 | Product development begins | 2019-02-20 → 2019-03-05 10:32 (+13d) | 2019-02-20 → 2019-03-05 10:32 (+13d) |  | 0d → 1.56d |  |
| 37 | Initial Prototype | 2019-02-20 → 2019-03-05 10:32 (+13d) | 2019-02-21 → 2019-03-12 10:32 (+19d) | 1d? → 1w | 0d → 3.68d | resources none → Model technician [200%]; Jamie Reding; Jane Clayton |
| 38 | Internal Testing | 2019-02-21 → 2019-03-18 08:00 (+25d) | 2019-02-22 → 2019-03-29 17:00 (+35d) | 1d? → 2w |  | constraint none → start no earlier than 2019-03-18 08:00; resources none → Maria Hammond; Jim Kim; Model technician; Jamie Reding [25%]; Testing Field |
| 39 | Raw Materials List | 2019-02-22 → 2019-04-01 08:00 (+38d) | 2019-02-25 → 2019-04-01 17:00 (+35d) | 1d? → 8h |  | resources none → Jamie Reding; Eva Corets |
| 40 | Parts Designation | 2019-02-25 → 2019-04-02 08:00 (+36d) | 2019-02-26 → 2019-04-15 17:00 (+48d) | 1d? → 2w |  | resources none → Eva Corets; Jamie Reding; Brad Sutton; Brenda Diaz |
| 41 | Product development complete | 2019-02-26 → 2019-04-15 17:00 (+48d) | 2019-02-26 → 2019-04-15 17:00 (+48d) |  |  |  |
| 42 | **Production Planning** | 2019-02-26 → 2019-04-15 17:00 (+48d) | 2019-03-04 → 2019-04-29 10:00 (+56d) | 4d? → 9.25d |  |  |
| 43 | Production planning begins | 2019-02-26 → 2019-04-15 17:00 (+48d) | 2019-02-26 → 2019-04-15 17:00 (+48d) |  |  |  |
| 44 | High-level Production Plan | 2019-02-26 → 2019-04-16 08:00 (+49d) | 2019-02-27 → 2019-04-22 17:00 (+54d) | 1d? → 5d |  | resources none → Bjorn Rettig; Eva Corets; Frank Zhang; Jane Clayton; Large Conference Room; Model technician |
| 45 | Resource Planning | 2019-02-27 → 2019-04-23 08:00 (+55d) | 2019-02-28 → 2019-04-25 17:00 (+56d) | 1d? → 3d |  | resources none → Judy Lew; Frank Zhang; Jamie Reding; Eva Corets; Bjorn Rettig |
| 46 | Quality Control Design | 2019-02-28 → 2019-04-26 08:00 (+57d) | 2019-03-01 → 2019-04-26 17:00 (+56d) | 1d? → 1d |  | resources none → Maria Hammond; Jim Kim |
| 47 | Final Production Plan Approval | 2019-03-01 → 2019-04-29 08:00 (+59d) | 2019-03-04 → 2019-04-29 10:00 (+56d) | 1d? → 2h |  | resources none → Judy Lew; Frank Zhang |
| 48 | Production planning complete | 2019-03-04 → 2019-04-29 10:00 (+56d) | 2019-03-04 → 2019-04-29 10:00 (+56d) |  |  |  |
| 49 | **Marketing** | 2019-03-04 → 2019-04-29 10:00 (+56d) | 2019-03-07 → 2019-05-22 09:24 (+76d) | 3d? → 16.93d |  |  |
| 50 | Marketing phase begins | 2019-03-04 → 2019-04-29 10:00 (+56d) | 2019-03-04 → 2019-04-29 10:00 (+56d) |  |  |  |
| 51 | Marketing Strategy Development | 2019-03-04 → 2019-04-29 10:00 (+56d) | 2019-03-05 → 2019-04-30 09:24 (+56d) | 1d? → 1.18d |  | resources none → Scott Seely; Brad Sutton; Brenda Diaz |
| 52 | Marketing Plan Development and Approval | 2019-03-05 → 2019-04-30 09:24 (+56d) | 2019-03-06 → 2019-05-01 09:24 (+56d) | 1d? → 1d |  | resources none → Frank Zhang; Judy Lew; Ryan Ihrig |
| 53 | Marketing Materials | 2019-03-06 → 2019-05-01 09:24 (+56d) | 2019-03-07 → 2019-05-22 09:24 (+76d) | 1d? → 3w |  | resources none → Jeff Pike; Brenda Diaz; Brad Sutton; Ryan Ihrig; Yan Li |
| 54 | Marketing phase complete | 2019-03-07 → 2019-05-22 09:24 (+76d) | 2019-03-07 → 2019-05-22 09:24 (+76d) |  |  |  |
| 55 | **Project Management** | 2019-01-07 → 2019-01-07 08:00 | 2019-01-07 → 2019-05-20 09:00 (+133d) | 1d? → 94.12d | 43.25d → 2.05d |  |

## Version 4 (saved 2018-09-17, file Tailspin Remote Drone 5.mpp)

Last finish stays 2019-05-22.

Changed:

| ID | Task | Start | Finish | Duration | Total float | Other |
| --- | --- | --- | --- | --- | --- | --- |
| 1 | **Target Market Research and Analysis** |  | 2019-02-21 08:32 → 2019-02-15 10:00 (-6d) | 32.07d → 28.25d | 3.33d → -2.99d |  |
| 2 | **Research** |  | 2019-02-14 13:56 → 2019-02-11 14:00 (-3d) | 27.62d → 24.62d | 3.33d → -2.99d |  |
| 8 | **Focus Groups** |  | 2019-01-30 16:56 → 2019-01-25 17:00 (-5d) | 15d → 12.01d | 3.81d → -2.99d |  |
| 11 | Conduct focus groups | 2019-01-16 16:56 → 2019-01-14 08:00 (-2d) | 2019-01-30 16:56 → 2019-01-25 17:00 (-5d) |  | 2.38d → -2.99d | constraint none → start no later than 2019-01-14 08:00 |
| 12 | **Observations** | 2019-01-30 16:56 → 2019-01-28 08:00 (-2d) | 2019-02-14 13:56 → 2019-02-11 14:00 (-3d) |  | 3.81d → 1.8d |  |
| 13 | Identify observation parameters | 2019-01-30 16:56 → 2019-01-28 08:00 (-2d) | 2019-01-31 11:56 → 2019-01-28 12:00 (-3d) |  | 2.38d → 6.8d |  |
| 14 | Select observation locations | 2019-01-31 11:56 → 2019-01-28 13:00 (-3d) | 2019-01-31 13:56 → 2019-01-28 14:00 (-3d) |  | 2.38d → 6.8d |  |
| 15 | Conduct observations | 2019-01-31 13:56 → 2019-01-28 14:00 (-3d) | 2019-02-14 13:56 → 2019-02-11 14:00 (-3d) |  | 2.38d → 6.8d |  |
| 16 | Research complete | 2019-02-14 13:56 → 2019-02-11 14:00 (-3d) | 2019-02-14 13:56 → 2019-02-11 14:00 (-3d) |  | 64.88d → 71.55d |  |
| 17 | **Analysis** | 2019-01-31 13:56 → 2019-01-28 14:00 (-3d) | 2019-02-21 08:32 → 2019-02-15 10:00 (-6d) | 14.45d → 13.62d | 3.68d → 1.8d |  |
| 18 | Analysis begins | 2019-01-31 13:56 → 2019-01-28 14:00 (-3d) | 2019-01-31 13:56 → 2019-01-28 14:00 (-3d) |  | 2.38d → 6.8d |  |
| 19 | **Analysis of Research Data** | 2019-01-31 13:56 → 2019-01-28 14:00 (-3d) | 2019-02-13 08:32 → 2019-02-07 10:00 (-6d) | 8.45d → 7.62d | 3.68d → 1.8d |  |
| 20 | Analyze surveys, focus groups, and observations | 2019-01-31 13:56 → 2019-01-28 14:00 (-3d) | 2019-02-05 08:32 → 2019-01-30 10:00 (-6d) | 2.95d → 2.12d | 1.56d → 6.8d |  |
| 21 | Create follow up actions for secondary research | 2019-02-05 08:32 → 2019-01-30 10:00 (-6d) | 2019-02-06 08:32 → 2019-01-31 10:00 (-6d) |  | 1.56d → 7.5d |  |
| 22 | Conduct secondary research | 2019-02-06 08:32 → 2019-01-31 10:00 (-6d) | 2019-02-13 08:32 → 2019-02-07 10:00 (-6d) |  | 1.56d → 7.5d |  |
| 23 | **Report of Research Findings** | 2019-02-12 08:32 → 2019-02-06 10:00 (-6d) | 2019-02-21 08:32 → 2019-02-15 10:00 (-6d) |  | 3.68d → 2.5d |  |
| 24 | Compile draft copy of report | 2019-02-12 08:32 → 2019-02-06 10:00 (-6d) | 2019-02-13 08:32 → 2019-02-07 10:00 (-6d) |  | 1.56d → 7.5d |  |
| 25 | Draft copy review period | 2019-02-13 08:32 → 2019-02-07 10:00 (-6d) | 2019-02-20 08:32 → 2019-02-14 10:00 (-6d) |  | 1.56d → 5.75d |  |
| 26 | Review comments and compile final report | 2019-02-20 08:32 → 2019-02-14 10:00 (-6d) | 2019-02-21 08:32 → 2019-02-15 10:00 (-6d) |  | 1.56d → 5.75d |  |
| 27 | Analysis complete | 2019-02-21 08:32 → 2019-02-15 10:00 (-6d) | 2019-02-21 08:32 → 2019-02-15 10:00 (-6d) |  | 1.56d → 5.75d |  |
| 28 | **Design** | 2019-02-21 08:32 → 2019-02-15 10:00 (-6d) | 2019-03-05 10:32 → 2019-03-06 12:00 (+1d) | 8.25d → 13.25d | 3.68d → 2.5d |  |
| 29 | Design begins | 2019-02-21 08:32 → 2019-02-15 10:00 (-6d) | 2019-02-21 08:32 → 2019-02-15 10:00 (-6d) |  | 1.56d → 7.5d |  |
| 30 | Research Findings Evaluation | 2019-02-21 08:32 → 2019-02-15 10:00 (-6d) | 2019-02-22 08:32 → 2019-02-18 10:00 (-4d) |  | 1.56d → 7.5d |  |
| 31 | Design Document | 2019-02-22 08:32 → 2019-02-18 10:00 (-4d) | 2019-02-26 08:32 → 2019-02-20 10:00 (-6d) |  | 1.56d → 7.5d |  |
| 32 | Proof of Concept | 2019-02-26 08:32 → 2019-02-20 10:00 (-6d) | 2019-03-05 08:32 → 2019-03-06 10:00 (+1d) | 5d → 2w | 3.68d → 2.5d |  |
| 33 | Final Design Selection | 2019-03-05 08:32 → 2019-03-06 10:00 (+1d) | 2019-03-05 10:32 → 2019-03-06 12:00 (+1d) |  | 3.68d → 2.5d |  |
| 34 | Design complete | 2019-03-05 10:32 → 2019-03-06 12:00 (+1d) | 2019-03-05 10:32 → 2019-03-06 12:00 (+1d) |  | 1.56d → 2.5d |  |
| 35 | **Product Development** | 2019-03-05 10:32 → 2019-03-06 12:00 (+1d) |  | 29.68d → 28.5d |  |  |
| 36 | Product development begins | 2019-03-05 10:32 → 2019-03-06 12:00 (+1d) | 2019-03-05 10:32 → 2019-03-06 12:00 (+1d) |  | 1.56d → 2.5d |  |
| 37 | Initial Prototype | 2019-03-05 10:32 → 2019-03-06 13:00 (+1d) | 2019-03-12 10:32 → 2019-03-13 12:00 (+1d) |  | 3.68d → 2.5d |  |
| 57 | Status Meeting 1 |  |  |  | 94d → 96.05d | resources Brad Sutton; Eva Corets; Florian Voss; Jane Clayton; Judy Lew → Brad Sutton; Eva Corets; Jane Clayton; Judy Lew; Florian Voss |
| 58 | Status Meeting 2 |  |  |  | 89d → 91.05d | resources Brad Sutton; Eva Corets; Florian Voss; Jane Clayton; Judy Lew → Brad Sutton; Eva Corets; Jane Clayton; Judy Lew; Florian Voss |
| 59 | Status Meeting 3 |  |  |  | 84d → 86.05d | resources Brad Sutton; Eva Corets; Florian Voss; Jane Clayton; Judy Lew → Brad Sutton; Eva Corets; Jane Clayton; Judy Lew; Florian Voss |
| 60 | Status Meeting 4 |  |  |  | 80d → 82.05d | resources Brad Sutton; Eva Corets; Florian Voss; Jane Clayton; Judy Lew → Brad Sutton; Eva Corets; Jane Clayton; Judy Lew; Florian Voss |
| 61 | Status Meeting 5 |  |  |  | 75d → 77.05d | resources Brad Sutton; Eva Corets; Florian Voss; Jane Clayton; Judy Lew → Brad Sutton; Eva Corets; Jane Clayton; Judy Lew; Florian Voss |
| 62 | Status Meeting 6 |  |  |  |  | resources Brad Sutton; Eva Corets; Florian Voss; Jane Clayton; Judy Lew → Brad Sutton; Eva Corets; Jane Clayton; Judy Lew; Florian Voss |
| 63 | Status Meeting 7 |  |  |  |  | resources Brad Sutton; Eva Corets; Florian Voss; Jane Clayton; Judy Lew → Brad Sutton; Eva Corets; Jane Clayton; Judy Lew; Florian Voss |
| 64 | Status Meeting 8 |  |  |  |  | resources Brad Sutton; Eva Corets; Florian Voss; Jane Clayton; Judy Lew → Brad Sutton; Eva Corets; Jane Clayton; Judy Lew; Florian Voss |
| 65 | Status Meeting 9 |  |  |  |  | resources Brad Sutton; Eva Corets; Florian Voss; Jane Clayton; Judy Lew → Brad Sutton; Eva Corets; Jane Clayton; Judy Lew; Florian Voss |
| 66 | Status Meeting 10 |  |  |  |  | resources Brad Sutton; Eva Corets; Florian Voss; Jane Clayton; Judy Lew → Brad Sutton; Eva Corets; Jane Clayton; Judy Lew; Florian Voss |
| 67 | Status Meeting 11 |  |  |  |  | resources Brad Sutton; Eva Corets; Florian Voss; Jane Clayton; Judy Lew → Brad Sutton; Eva Corets; Jane Clayton; Judy Lew; Florian Voss |
| 68 | Status Meeting 12 |  |  |  |  | resources Brad Sutton; Eva Corets; Florian Voss; Jane Clayton; Judy Lew → Brad Sutton; Eva Corets; Jane Clayton; Judy Lew; Florian Voss |
| 69 | Status Meeting 13 |  |  |  |  | resources Brad Sutton; Eva Corets; Florian Voss; Jane Clayton; Judy Lew → Brad Sutton; Eva Corets; Jane Clayton; Judy Lew; Florian Voss |
| 70 | Status Meeting 14 |  |  |  |  | resources Brad Sutton; Eva Corets; Florian Voss; Jane Clayton; Judy Lew → Brad Sutton; Eva Corets; Jane Clayton; Judy Lew; Florian Voss |
| 71 | Status Meeting 15 |  |  |  |  | resources Brad Sutton; Eva Corets; Florian Voss; Jane Clayton; Judy Lew → Brad Sutton; Eva Corets; Jane Clayton; Judy Lew; Florian Voss |
| 72 | Status Meeting 16 |  |  |  |  | resources Brad Sutton; Eva Corets; Florian Voss; Jane Clayton; Judy Lew → Brad Sutton; Eva Corets; Jane Clayton; Judy Lew; Florian Voss |
| 73 | Status Meeting 17 |  |  |  |  | resources Brad Sutton; Eva Corets; Florian Voss; Jane Clayton; Judy Lew → Brad Sutton; Eva Corets; Jane Clayton; Judy Lew; Florian Voss |
| 74 | Status Meeting 18 |  |  |  |  | resources Brad Sutton; Eva Corets; Florian Voss; Jane Clayton; Judy Lew → Brad Sutton; Eva Corets; Jane Clayton; Judy Lew; Florian Voss |
| 75 | Status Meeting 19 |  |  |  |  | resources Brad Sutton; Eva Corets; Florian Voss; Jane Clayton; Judy Lew → Brad Sutton; Eva Corets; Jane Clayton; Judy Lew; Florian Voss |
| 76 | Status Meeting 20 |  |  |  |  | resources Brad Sutton; Eva Corets; Florian Voss; Jane Clayton; Judy Lew → Brad Sutton; Eva Corets; Jane Clayton; Judy Lew; Florian Voss |

## Version 5 (saved 2018-09-17, file Tailspin Remote Drone 6.mpp)

Last finish stays 2019-05-22.

Changed:

| ID | Task | Start | Finish | Duration | Total float | Other |
| --- | --- | --- | --- | --- | --- | --- |
| 2 | **Research** |  | 2019-02-11 14:00 → 2019-02-13 11:00 (+2d) | 24.62d → 26.38d |  |  |
| 7 | Conduct survey |  |  |  | 107.26d → 107.81d | resources Judy Lew [57.1%]; Scott Seely [57.1%]; Annette Hill [28.6%]; Ryan Ihrig [57.1%]; Bottled water [2 case] → Judy Lew [50%]; Scott Seely [57.1%]; Annette Hill [28.6%]; Ryan Ihrig [57.1%]; Bottled water [2 case] |
| 11 | Conduct focus groups |  |  |  |  | resources Food [0.1%]; Judy Lew; Annette Hill [50%] → Food [0.1%]; Judy Lew [50%]; Annette Hill [50%] |
| 12 | **Observations** |  | 2019-02-11 14:00 → 2019-02-13 11:00 (+2d) | 10.62d → 12.38d |  |  |
| 15 | Conduct observations |  | 2019-02-11 14:00 → 2019-02-13 11:00 (+2d) | 2w → 2.35w | 6.8d → 1.8d |  |
| 16 | Research complete | 2019-02-11 14:00 → 2019-02-13 11:00 (+2d) | 2019-02-11 14:00 → 2019-02-13 11:00 (+2d) |  | 71.55d → 70.42d |  |
| 32 | Proof of Concept |  |  |  |  | resources Model technician; Maria Hammond; Greg Guzik → Model technician; Maria Hammond; Greg Guzik; SD Card [0.03 4 GB]; Digital camera |
| 35 | **Product Development** |  | 2019-04-15 17:00 → 2019-04-16 10:00 (+1d) | 28.5d → 28.75d |  |  |
| 38 | Internal Testing |  |  |  |  | resources Maria Hammond; Jim Kim; Model technician; Jamie Reding [25%]; Testing Field → Maria Hammond; Jim Kim; Model technician; Jamie Reding [25%]; Testing Field; SD Card [1 4 GB]; Digital camera |
| 40 | Parts Designation |  | 2019-04-15 17:00 → 2019-04-16 10:00 (+1d) | 2w → 2.05w |  |  |
| 41 | Product development complete | 2019-04-15 17:00 → 2019-04-16 10:00 (+1d) | 2019-04-15 17:00 → 2019-04-16 10:00 (+1d) |  |  |  |
| 42 | **Production Planning** | 2019-04-15 17:00 → 2019-04-16 10:00 (+1d) | 2019-04-29 10:00 → 2019-04-29 14:00 | 9.25d → 9.38d |  |  |
| 43 | Production planning begins | 2019-04-15 17:00 → 2019-04-16 10:00 (+1d) | 2019-04-15 17:00 → 2019-04-16 10:00 (+1d) |  |  |  |
| 44 | High-level Production Plan | 2019-04-16 08:00 → 2019-04-16 10:00 | 2019-04-22 17:00 → 2019-04-23 11:00 (+1d) | 5d → 5.12d |  |  |
| 45 | Resource Planning | 2019-04-23 08:00 → 2019-04-23 11:00 | 2019-04-25 17:00 → 2019-04-26 11:00 (+1d) |  |  |  |
| 46 | Quality Control Design | 2019-04-26 08:00 → 2019-04-26 11:00 | 2019-04-26 17:00 → 2019-04-29 11:00 (+3d) |  |  |  |
| 47 | Final Production Plan Approval | 2019-04-29 08:00 → 2019-04-29 11:00 | 2019-04-29 10:00 → 2019-04-29 14:00 |  |  |  |
| 48 | Production planning complete | 2019-04-29 10:00 → 2019-04-29 14:00 | 2019-04-29 10:00 → 2019-04-29 14:00 |  |  |  |
| 49 | **Marketing** | 2019-04-29 10:00 → 2019-04-29 14:00 | 2019-05-22 09:24 → 2019-05-22 15:24 | 16.93d → 17.18d |  |  |
| 50 | Marketing phase begins | 2019-04-29 10:00 → 2019-04-29 14:00 | 2019-04-29 10:00 → 2019-04-29 14:00 |  |  |  |
| 51 | Marketing Strategy Development | 2019-04-29 10:00 → 2019-04-29 14:00 | 2019-04-30 09:24 → 2019-04-30 13:24 |  |  |  |
| 52 | Marketing Plan Development and Approval | 2019-04-30 09:24 → 2019-04-30 13:24 | 2019-05-01 09:24 → 2019-05-01 13:24 |  |  |  |
| 53 | Marketing Materials | 2019-05-01 09:24 → 2019-05-01 13:24 | 2019-05-22 09:24 → 2019-05-22 15:24 | 3w → 3.05w |  |  |
| 54 | Marketing phase complete | 2019-05-22 09:24 → 2019-05-22 15:24 | 2019-05-22 09:24 → 2019-05-22 15:24 |  |  |  |

## Version 6 (saved 2018-10-02, file Tailspin Remote Drone 8.mpp)

Last finish 2019-05-22 → 2019-05-23 (+1d).

Changed:

| ID | Task | Start | Finish | Duration | Total float | Other |
| --- | --- | --- | --- | --- | --- | --- |
| 1 | **Target Market Research and Analysis** |  | 2019-02-15 10:00 → 2019-02-18 14:00 (+3d) | 28.25d → 29.62d | -2.99d → -3.24d |  |
| 2 | **Research** |  | 2019-02-13 11:00 → 2019-02-18 14:00 (+5d) | 26.38d → 29.62d | -2.99d → -3.24d |  |
| 4 | **Surveys** |  | 2019-01-15 16:56 → 2019-01-16 19:00 (+1d) | 6.99d → 8d | -2.99d → -3.24d |  |
| 5 | Develop survey questionnaire |  | 2019-01-08 15:56 → 2019-01-08 16:56 | 2.12d → 2.24d | -2.99d → -3.24d |  |
| 6 | Review and approval of survey | 2019-01-08 15:56 → 2019-01-08 16:56 | 2019-01-08 16:56 → 2019-01-09 08:56 (+1d) |  | -2.99d → -3.24d |  |
| 7 | Conduct survey | 2019-01-08 16:56 → 2019-01-09 10:00 (+1d) | 2019-01-15 16:56 → 2019-01-16 19:00 (+1d) | 1w → 1.2w | 107.81d → 107d | resources Judy Lew [50%]; Scott Seely [57.1%]; Annette Hill [28.6%]; Ryan Ihrig [57.1%]; Bottled water [2 case] → Judy Lew [50%]; Scott Seely [57.1%]; Annette Hill [28.6%]; Ryan Ihrig [57.1%]; Bottled water [0.06 case] |
| 8 | **Focus Groups** | 2019-01-08 16:56 → 2019-01-09 08:56 (+1d) |  | 12.01d → 11.88d | -2.99d → -3.24d |  |
| 9 | Identify focus group member demographics | 2019-01-08 16:56 → 2019-01-09 08:56 (+1d) | 2019-01-09 16:56 → 2019-01-10 08:56 (+1d) |  | -2.99d → -3.24d |  |
| 10 | Contact potential focus group members | 2019-01-09 16:56 → 2019-01-10 08:56 (+1d) | 2019-01-16 16:56 → 2019-01-17 09:56 (+1d) | 5d → 5.12d | -2.99d → -3.24d |  |
| 12 | **Observations** |  | 2019-02-13 11:00 → 2019-02-18 14:00 (+5d) | 12.38d → 15.62d | 1.8d → 1d |  |
| 15 | Conduct observations |  | 2019-02-13 11:00 → 2019-02-18 14:00 (+5d) | 2.35w → 3w | 1.8d → 1d |  |
| 16 | Research complete | 2019-02-13 11:00 → 2019-02-18 14:00 (+5d) | 2019-02-13 11:00 → 2019-02-18 14:00 (+5d) |  | 70.42d → 67.42d |  |
| 17 | **Analysis** |  | 2019-02-15 10:00 → 2019-02-15 11:00 | 13.62d → 13.75d | 1.8d → 1d |  |
| 19 | **Analysis of Research Data** |  | 2019-02-07 10:00 → 2019-02-07 11:00 | 7.62d → 7.75d | 1.8d → 1d |  |
| 22 | Conduct secondary research |  | 2019-02-07 10:00 → 2019-02-07 11:00 | 1w → 1.02w | 2.5d → 1d |  |
| 23 | **Report of Research Findings** | 2019-02-06 10:00 → 2019-02-06 11:00 | 2019-02-15 10:00 → 2019-02-15 11:00 |  | 2.5d → 1d |  |
| 24 | Compile draft copy of report | 2019-02-06 10:00 → 2019-02-06 11:00 | 2019-02-07 10:00 → 2019-02-07 11:00 |  | 2.5d → 1d |  |
| 25 | Draft copy review period | 2019-02-07 10:00 → 2019-02-07 11:00 | 2019-02-14 10:00 → 2019-02-14 11:00 |  | 2.5d → 1d |  |
| 26 | Review comments and compile final report | 2019-02-14 10:00 → 2019-02-14 11:00 | 2019-02-15 10:00 → 2019-02-15 11:00 |  | 2.5d → 1d |  |
| 27 | Analysis complete | 2019-02-15 10:00 → 2019-02-15 11:00 | 2019-02-15 10:00 → 2019-02-15 11:00 |  | 2.5d → 1d |  |
| 28 | **Design** | 2019-02-15 10:00 → 2019-02-15 11:00 | 2019-03-06 12:00 → 2019-03-07 16:00 (+1d) | 13.25d → 14.5d | 2.5d → 1d |  |
| 29 | Design begins | 2019-02-15 10:00 → 2019-02-15 11:00 | 2019-02-15 10:00 → 2019-02-15 11:00 |  | 2.5d → 1d |  |
| 30 | Research Findings Evaluation | 2019-02-15 10:00 → 2019-02-15 11:00 | 2019-02-18 10:00 → 2019-02-19 14:00 (+1d) | 1d → 2d | 2.5d → 1d |  |
| 31 | Design Document | 2019-02-18 10:00 → 2019-02-19 14:00 (+1d) | 2019-02-20 10:00 → 2019-02-21 14:00 (+1d) |  | 2.5d → 1d |  |
| 32 | Proof of Concept | 2019-02-20 10:00 → 2019-02-21 14:00 (+1d) | 2019-03-06 10:00 → 2019-03-07 14:00 (+1d) |  | 2.5d → 1d |  |
| 33 | Final Design Selection | 2019-03-06 10:00 → 2019-03-07 14:00 (+1d) | 2019-03-06 12:00 → 2019-03-07 16:00 (+1d) |  | 2.5d → 1d |  |
| 34 | Design complete | 2019-03-06 12:00 → 2019-03-07 16:00 (+1d) | 2019-03-06 12:00 → 2019-03-07 16:00 (+1d) |  | 2.5d → 1d |  |
| 35 | **Product Development** | 2019-03-06 12:00 → 2019-03-07 16:00 (+1d) | 2019-04-16 10:00 → 2019-04-16 11:00 | 28.75d → 27.5d |  |  |
| 36 | Product development begins | 2019-03-06 12:00 → 2019-03-07 16:00 (+1d) | 2019-03-06 12:00 → 2019-03-07 16:00 (+1d) |  | 2.5d → 1d |  |
| 37 | Initial Prototype | 2019-03-06 13:00 → 2019-03-07 16:00 (+1d) | 2019-03-13 12:00 → 2019-03-14 17:00 (+1d) | 1w → 1.02w | 2.5d → 1d |  |
| 39 | Raw Materials List |  | 2019-04-01 17:00 → 2019-04-02 09:00 (+1d) | 8h → 9h |  |  |
| 40 | Parts Designation | 2019-04-02 08:00 → 2019-04-02 09:00 | 2019-04-16 10:00 → 2019-04-16 11:00 |  |  |  |
| 41 | Product development complete | 2019-04-16 10:00 → 2019-04-16 11:00 | 2019-04-16 10:00 → 2019-04-16 11:00 |  |  |  |
| 42 | **Production Planning** | 2019-04-16 10:00 → 2019-04-16 11:00 | 2019-04-29 14:00 → 2019-04-29 15:00 |  |  |  |
| 43 | Production planning begins | 2019-04-16 10:00 → 2019-04-16 11:00 | 2019-04-16 10:00 → 2019-04-16 11:00 |  |  |  |
| 44 | High-level Production Plan | 2019-04-16 10:00 → 2019-04-16 11:00 | 2019-04-23 11:00 → 2019-04-23 12:00 |  |  |  |
| 45 | Resource Planning | 2019-04-23 11:00 → 2019-04-23 13:00 | 2019-04-26 11:00 → 2019-04-26 12:00 |  |  |  |
| 46 | Quality Control Design | 2019-04-26 11:00 → 2019-04-26 13:00 | 2019-04-29 11:00 → 2019-04-29 12:00 |  |  |  |
| 47 | Final Production Plan Approval | 2019-04-29 11:00 → 2019-04-29 13:00 | 2019-04-29 14:00 → 2019-04-29 15:00 |  |  |  |
| 48 | Production planning complete | 2019-04-29 14:00 → 2019-04-29 15:00 | 2019-04-29 14:00 → 2019-04-29 15:00 |  |  |  |
| 49 | **Marketing** | 2019-04-29 14:00 → 2019-04-29 15:00 | 2019-05-22 15:24 → 2019-05-23 08:24 (+1d) | 17.18d → 17.3d |  |  |
| 50 | Marketing phase begins | 2019-04-29 14:00 → 2019-04-29 15:00 | 2019-04-29 14:00 → 2019-04-29 15:00 |  |  |  |
| 51 | Marketing Strategy Development | 2019-04-29 14:00 → 2019-04-29 15:00 | 2019-04-30 13:24 → 2019-04-30 14:24 |  |  |  |
| 52 | Marketing Plan Development and Approval | 2019-04-30 13:24 → 2019-04-30 14:24 | 2019-05-01 13:24 → 2019-05-01 14:24 |  |  |  |
| 53 | Marketing Materials | 2019-05-01 13:24 → 2019-05-01 14:24 | 2019-05-22 15:24 → 2019-05-23 08:24 (+1d) | 3.05w → 3.08w |  |  |
| 54 | Marketing phase complete | 2019-05-22 15:24 → 2019-05-23 08:24 (+1d) | 2019-05-22 15:24 → 2019-05-23 08:24 (+1d) |  |  |  |

## Version 7 (data date 2019-03-01, saved 2018-10-02, file Tailspin Remote Drone 10.mpp)

Last finish 2019-05-23 → 2019-06-13 (+21d). Complete tasks 0 → 29.

Changed:

| ID | Task | Start | Finish | Duration | Complete | Total float | Other |
| --- | --- | --- | --- | --- | --- | --- | --- |
| 1 | **Target Market Research and Analysis** | 2019-01-07 08:00 A | 2019-02-18 14:00 → 2019-02-20 10:00 A (+2d) | 29.62d → 31.25d | 0% → 100% | -3.24d → none | baseline start none → 2019-01-07 08:00; baseline finish none → 2019-02-18 14:00 |
| 2 | **Research** | 2019-01-07 08:00 A | 2019-02-18 14:00 → 2019-02-18 15:00 A | 29.62d → 29.75d | 0% → 100% | -3.24d → none | baseline start none → 2019-01-07 08:00; baseline finish none → 2019-02-18 14:00 |
| 3 | Research begins | 2019-01-07 08:00 A | 2019-01-07 08:00 A |  | 0% → 100% | -3.24d → none | baseline start none → 2019-01-07 08:00; baseline finish none → 2019-01-07 08:00 |
| 4 | **Surveys** | 2019-01-07 08:00 A | 2019-01-16 19:00 A |  | 0% → 100% | -3.24d → none | baseline start none → 2019-01-07 08:00; baseline finish none → 2019-01-16 19:00 |
| 5 | Develop survey questionnaire | 2019-01-07 08:00 A | 2019-01-08 16:56 A |  | 0% → 100% | -3.24d → none | baseline start none → 2019-01-07 08:00; baseline finish none → 2019-01-08 16:56 |
| 6 | Review and approval of survey | 2019-01-08 16:56 A | 2019-01-09 08:56 A |  | 0% → 100% | -3.24d → none | baseline start none → 2019-01-08 16:56; baseline finish none → 2019-01-09 08:56 |
| 7 | Conduct survey | 2019-01-09 10:00 A | 2019-01-16 19:00 A |  | 0% → 100% | 107d → none | baseline start none → 2019-01-09 10:00; baseline finish none → 2019-01-16 19:00 |
| 8 | **Focus Groups** | 2019-01-09 08:56 A | 2019-01-25 17:00 A |  | 0% → 100% | -3.24d → none | baseline start none → 2019-01-09 08:56; baseline finish none → 2019-01-25 17:00 |
| 9 | Identify focus group member demographics | 2019-01-09 08:56 A | 2019-01-10 08:56 A |  | 0% → 100% | -3.24d → none | baseline start none → 2019-01-09 08:56; baseline finish none → 2019-01-10 08:56 |
| 10 | Contact potential focus group members | 2019-01-10 08:56 A | 2019-01-17 09:56 A |  | 0% → 100% | -3.24d → none | baseline start none → 2019-01-10 08:56; baseline finish none → 2019-01-17 09:56 |
| 11 | Conduct focus groups | 2019-01-14 08:00 A | 2019-01-25 17:00 A |  | 0% → 100% | -3.24d → none | baseline start none → 2019-01-14 08:00; baseline finish none → 2019-01-25 17:00 |
| 12 | **Observations** | 2019-01-28 08:00 A | 2019-02-18 14:00 → 2019-02-18 15:00 A | 15.62d → 15.75d | 0% → 100% | 1d → none | baseline start none → 2019-01-28 08:00; baseline finish none → 2019-02-18 14:00 |
| 13 | Identify observation parameters | 2019-01-28 08:00 A | 2019-01-28 12:00 A |  | 0% → 100% | 1d → none | baseline start none → 2019-01-28 08:00; baseline finish none → 2019-01-28 12:00 |
| 14 | Select observation locations | 2019-01-28 13:00 A | 2019-01-28 14:00 → 2019-01-28 15:00 A | 1h → 2h | 0% → 100% | 1d → none | baseline start none → 2019-01-28 13:00; baseline finish none → 2019-01-28 14:00 |
| 15 | Conduct observations | 2019-01-28 14:00 → 2019-01-28 15:00 A | 2019-02-18 14:00 → 2019-02-18 15:00 A |  | 0% → 100% | 1d → none | baseline start none → 2019-01-28 14:00; baseline finish none → 2019-02-18 14:00 |
| 16 | Research complete | 2019-02-18 14:00 → 2019-02-18 15:00 A | 2019-02-18 14:00 → 2019-02-18 15:00 A |  | 0% → 100% | 67.42d → none | baseline start none → 2019-02-18 14:00; baseline finish none → 2019-02-18 14:00 |
| 17 | **Analysis** | 2019-01-28 14:00 → 2019-01-28 15:00 A | 2019-02-15 11:00 → 2019-02-20 10:00 A (+5d) | 13.75d → 16.5d | 0% → 100% | 1d → none | baseline start none → 2019-01-28 14:00; baseline finish none → 2019-02-15 11:00 |
| 18 | Analysis begins | 2019-01-28 14:00 → 2019-01-28 15:00 A | 2019-01-28 14:00 → 2019-01-28 15:00 A |  | 0% → 100% | 1d → none | baseline start none → 2019-01-28 14:00; baseline finish none → 2019-01-28 14:00 |
| 19 | **Analysis of Research Data** | 2019-01-28 14:00 → 2019-01-28 15:00 A | 2019-02-07 11:00 → 2019-02-12 10:00 A (+5d) | 7.75d → 10.5d | 0% → 100% | 1d → none | baseline start none → 2019-01-28 14:00; baseline finish none → 2019-02-07 11:00 |
| 20 | Analyze surveys, focus groups, and observations | 2019-01-28 14:00 → 2019-01-28 15:00 A | 2019-01-30 10:00 → 2019-01-31 10:00 A (+1d) | 2.12d → 3d | 0% → 100% | 1d → none | baseline start none → 2019-01-28 14:00; baseline finish none → 2019-01-30 10:00 |
| 21 | Create follow up actions for secondary research | 2019-01-30 10:00 → 2019-01-31 10:00 A (+1d) | 2019-01-31 10:00 → 2019-02-01 10:00 A (+1d) |  | 0% → 100% | 1d → none | baseline start none → 2019-01-30 10:00; baseline finish none → 2019-01-31 10:00 |
| 22 | Conduct secondary research | 2019-01-31 10:00 → 2019-02-01 10:00 A (+1d) | 2019-02-07 11:00 → 2019-02-12 10:00 A (+5d) | 1.02w → 7d | 0% → 100% | 1d → none | baseline start none → 2019-01-31 10:00; baseline finish none → 2019-02-07 11:00 |
| 23 | **Report of Research Findings** | 2019-02-06 11:00 → 2019-02-08 10:00 A (+2d) | 2019-02-15 11:00 → 2019-02-20 10:00 A (+5d) | 7d → 8d | 0% → 100% | 1d → none | baseline start none → 2019-02-06 11:00; baseline finish none → 2019-02-15 11:00 |
| 24 | Compile draft copy of report | 2019-02-06 11:00 → 2019-02-08 10:00 A (+2d) | 2019-02-07 11:00 → 2019-02-12 10:00 A (+5d) | 8h → 16h | 0% → 100% | 1d → none | baseline start none → 2019-02-06 11:00; baseline finish none → 2019-02-07 11:00 |
| 25 | Draft copy review period | 2019-02-07 11:00 → 2019-02-12 10:00 A (+5d) | 2019-02-14 11:00 → 2019-02-19 10:00 A (+5d) |  | 0% → 100% | 1d → none | baseline start none → 2019-02-07 11:00; baseline finish none → 2019-02-14 11:00 |
| 26 | Review comments and compile final report | 2019-02-14 11:00 → 2019-02-19 10:00 A (+5d) | 2019-02-15 11:00 → 2019-02-20 10:00 A (+5d) |  | 0% → 100% | 1d → none | baseline start none → 2019-02-14 11:00; baseline finish none → 2019-02-15 11:00 |
| 27 | Analysis complete | 2019-02-15 11:00 → 2019-02-20 10:00 A (+5d) | 2019-02-15 11:00 → 2019-02-20 10:00 A (+5d) |  | 0% → 100% | 1d → none | baseline start none → 2019-02-15 11:00; baseline finish none → 2019-02-15 11:00 |
| 28 | **Design** | 2019-02-15 11:00 → 2019-02-20 10:00 A (+5d) | 2019-03-07 16:00 → 2019-03-26 15:00 (+19d) | 14.5d → 24.5d | 0% → 23% | 1d → -10.25d | baseline start none → 2019-02-15 11:00; baseline finish none → 2019-03-07 16:00 |
| 29 | Design begins | 2019-02-15 11:00 → 2019-02-20 10:00 A (+5d) | 2019-02-15 11:00 → 2019-02-20 10:00 A (+5d) |  | 0% → 100% | 1d → none | baseline start none → 2019-02-15 11:00; baseline finish none → 2019-02-15 11:00 |
| 30 | Research Findings Evaluation | 2019-02-15 11:00 → 2019-02-20 10:00 A (+5d) | 2019-02-19 14:00 → 2019-02-25 12:00 A (+6d) | 2d → 3d | 0% → 100% | 1d → none | baseline start none → 2019-02-15 11:00; baseline finish none → 2019-02-19 14:00 |
| 31 | Design Document | 2019-02-19 14:00 → 2019-02-25 13:00 A (+6d) | 2019-02-21 14:00 → 2019-03-12 12:00 (+19d) |  | 0% → 25% | 1d → -13.88d | baseline start none → 2019-02-19 14:00; baseline finish none → 2019-02-21 14:00 |
| 32 | Proof of Concept | 2019-02-21 14:00 → 2019-03-12 13:00 (+19d) | 2019-03-07 14:00 → 2019-03-26 12:00 (+19d) |  |  | 1d → -13.88d | constraint none → start no earlier than 2019-03-08 17:00; baseline start none → 2019-02-21 14:00; baseline finish none → 2019-03-07 14:00 |
| 33 | Final Design Selection | 2019-03-07 14:00 → 2019-03-26 13:00 (+19d) | 2019-03-07 16:00 → 2019-03-26 15:00 (+19d) |  |  | 1d → -13.88d | baseline start none → 2019-03-07 14:00; baseline finish none → 2019-03-07 16:00 |
| 34 | Design complete | 2019-03-07 16:00 → 2019-03-26 15:00 (+19d) | 2019-03-07 16:00 → 2019-03-26 15:00 (+19d) |  |  | 1d → -13.88d | baseline start none → 2019-03-07 16:00; baseline finish none → 2019-03-07 16:00 |
| 35 | **Product Development** | 2019-03-07 16:00 → 2019-03-26 15:00 (+19d) | 2019-04-16 11:00 → 2019-05-07 14:00 (+21d) | 27.5d → 29.88d |  | 0d → -13.88d | baseline start none → 2019-03-07 16:00; baseline finish none → 2019-04-16 11:00 |
| 36 | Product development begins | 2019-03-07 16:00 → 2019-03-26 15:00 (+19d) | 2019-03-07 16:00 → 2019-03-26 15:00 (+19d) |  |  | 1d → -13.88d | baseline start none → 2019-03-07 16:00; baseline finish none → 2019-03-07 16:00 |
| 37 | Initial Prototype | 2019-03-07 16:00 → 2019-04-01 14:00 (+25d) | 2019-03-14 17:00 → 2019-04-08 14:00 (+25d) | 1.02w → 1w |  | 1d → -13.88d | baseline start none → 2019-03-07 16:00; baseline finish none → 2019-03-14 17:00 |
| 38 | Internal Testing | 2019-03-18 08:00 → 2019-04-08 14:00 (+21d) | 2019-03-29 17:00 → 2019-04-22 14:00 (+24d) |  |  | 0d → -13.88d | baseline start none → 2019-03-18 08:00; baseline finish none → 2019-03-29 17:00 |
| 39 | Raw Materials List | 2019-04-01 08:00 → 2019-04-22 14:00 (+21d) | 2019-04-02 09:00 → 2019-04-23 14:00 (+21d) | 9h → 8h |  | 0d → -13.88d | baseline start none → 2019-04-01 08:00; baseline finish none → 2019-04-02 09:00 |
| 40 | Parts Designation | 2019-04-02 09:00 → 2019-04-23 14:00 (+21d) | 2019-04-16 11:00 → 2019-05-07 14:00 (+21d) | 2.05w → 2w |  | 0d → -13.88d | baseline start none → 2019-04-02 09:00; baseline finish none → 2019-04-16 11:00 |
| 41 | Product development complete | 2019-04-16 11:00 → 2019-05-07 14:00 (+21d) | 2019-04-16 11:00 → 2019-05-07 14:00 (+21d) |  |  | 0d → -13.88d | baseline start none → 2019-04-16 11:00; baseline finish none → 2019-04-16 11:00 |
| 42 | **Production Planning** | 2019-04-16 11:00 → 2019-05-07 14:00 (+21d) | 2019-04-29 15:00 → 2019-05-20 16:00 (+21d) | 9.38d → 9.25d |  | 0d → -13.88d | baseline start none → 2019-04-16 11:00; baseline finish none → 2019-04-29 15:00 |
| 43 | Production planning begins | 2019-04-16 11:00 → 2019-05-07 14:00 (+21d) | 2019-04-16 11:00 → 2019-05-07 14:00 (+21d) |  |  | 0d → -13.88d | baseline start none → 2019-04-16 11:00; baseline finish none → 2019-04-16 11:00 |
| 44 | High-level Production Plan | 2019-04-16 11:00 → 2019-05-07 14:00 (+21d) | 2019-04-23 12:00 → 2019-05-14 14:00 (+21d) | 5.12d → 5d |  | 0d → -13.88d | baseline start none → 2019-04-16 11:00; baseline finish none → 2019-04-23 12:00 |
| 45 | Resource Planning | 2019-04-23 13:00 → 2019-05-14 14:00 (+21d) | 2019-04-26 12:00 → 2019-05-17 14:00 (+21d) |  |  | 0d → -13.88d | baseline start none → 2019-04-23 13:00; baseline finish none → 2019-04-26 12:00 |
| 46 | Quality Control Design | 2019-04-26 13:00 → 2019-05-17 14:00 (+21d) | 2019-04-29 12:00 → 2019-05-20 14:00 (+21d) |  |  | 0d → -13.88d | baseline start none → 2019-04-26 13:00; baseline finish none → 2019-04-29 12:00 |
| 47 | Final Production Plan Approval | 2019-04-29 13:00 → 2019-05-20 14:00 (+21d) | 2019-04-29 15:00 → 2019-05-20 16:00 (+21d) |  |  | 0d → -13.88d | baseline start none → 2019-04-29 13:00; baseline finish none → 2019-04-29 15:00 |
| 48 | Production planning complete | 2019-04-29 15:00 → 2019-05-20 16:00 (+21d) | 2019-04-29 15:00 → 2019-05-20 16:00 (+21d) |  |  | 0d → -13.88d | baseline start none → 2019-04-29 15:00; baseline finish none → 2019-04-29 15:00 |
| 49 | **Marketing** | 2019-04-29 15:00 → 2019-05-20 16:00 (+21d) | 2019-05-23 08:24 → 2019-06-13 15:24 (+21d) | 17.3d → 16.93d |  | 0d → -12.62d | baseline start none → 2019-04-29 15:00; baseline finish none → 2019-05-23 08:24 |
| 50 | Marketing phase begins | 2019-04-29 15:00 → 2019-05-20 16:00 (+21d) | 2019-04-29 15:00 → 2019-05-20 16:00 (+21d) |  |  | 0d → -12.62d | baseline start none → 2019-04-29 15:00; baseline finish none → 2019-04-29 15:00 |
| 51 | Marketing Strategy Development | 2019-04-29 15:00 → 2019-05-20 16:00 (+21d) | 2019-04-30 14:24 → 2019-05-21 15:24 (+21d) |  |  | 0d → -12.62d | baseline start none → 2019-04-29 15:00; baseline finish none → 2019-04-30 14:24 |
| 52 | Marketing Plan Development and Approval | 2019-04-30 14:24 → 2019-05-21 15:24 (+21d) | 2019-05-01 14:24 → 2019-05-22 15:24 (+21d) |  |  | 0d → -11.8d | baseline start none → 2019-04-30 14:24; baseline finish none → 2019-05-01 14:24 |
| 53 | Marketing Materials | 2019-05-01 14:24 → 2019-05-22 15:24 (+21d) | 2019-05-23 08:24 → 2019-06-13 15:24 (+21d) | 3.08w → 3w |  | 0d → -11.8d | baseline start none → 2019-05-01 14:24; baseline finish none → 2019-05-23 08:24 |
| 54 | Marketing phase complete | 2019-05-23 08:24 → 2019-06-13 15:24 (+21d) | 2019-05-23 08:24 → 2019-06-13 15:24 (+21d) |  |  | 0d → -11.8d | baseline start none → 2019-05-23 08:24; baseline finish none → 2019-05-23 08:24 |
| 55 | **Project Management** | 2019-01-07 08:00 A |  |  | 0% → 40% | 2.92d → 17.68d | baseline start none → 2019-01-07 08:00; baseline finish none → 2019-05-20 09:00 |
| 56 | **Status Meeting** | 2019-01-07 08:00 A |  |  | 0% → 40% | 2.92d → 17.68d | baseline start none → 2019-01-07 08:00; baseline finish none → 2019-05-20 09:00 |
| 57 | Status Meeting 1 | 2019-01-07 08:00 A | 2019-01-07 09:00 A |  | 0% → 100% | 96.92d → none | baseline start none → 2019-01-07 08:00; baseline finish none → 2019-01-07 09:00 |
| 58 | Status Meeting 2 | 2019-01-14 08:00 A | 2019-01-14 09:00 A |  | 0% → 100% | 91.92d → none | baseline start none → 2019-01-14 08:00; baseline finish none → 2019-01-14 09:00 |
| 59 | Status Meeting 3 | 2019-01-22 08:00 A | 2019-01-22 09:00 A |  | 0% → 100% | 86.92d → none | baseline start none → 2019-01-22 08:00; baseline finish none → 2019-01-22 09:00 |
| 60 | Status Meeting 4 | 2019-01-28 08:00 A | 2019-01-28 09:00 A |  | 0% → 100% | 82.92d → none | baseline start none → 2019-03-18 08:00; baseline finish none → 2019-03-18 09:00 |
| 61 | Status Meeting 5 | 2019-02-04 08:00 A | 2019-02-04 09:00 A |  | 0% → 100% | 77.92d → none | baseline start none → 2019-03-25 08:00; baseline finish none → 2019-03-25 09:00 |
| 62 | Status Meeting 6 | 2019-02-11 08:00 A | 2019-02-11 09:00 A |  | 0% → 100% | 72.92d → none | baseline start none → 2019-04-01 08:00; baseline finish none → 2019-04-01 09:00 |
| 63 | Status Meeting 7 | 2019-02-18 08:00 A | 2019-02-18 09:00 A |  | 0% → 100% | 67.92d → none | baseline start none → 2019-04-08 08:00; baseline finish none → 2019-04-08 09:00 |
| 64 | Status Meeting 8 | 2019-02-25 08:00 A | 2019-02-25 09:00 A |  | 0% → 100% | 62.92d → none | baseline start none → 2019-04-15 08:00; baseline finish none → 2019-04-15 09:00 |
| 65 | Status Meeting 9 |  |  |  |  | 57.92d → 72.67d | baseline start none → 2019-04-22 08:00; baseline finish none → 2019-04-22 09:00 |
| 66 | Status Meeting 10 |  |  |  |  | 52.92d → 67.67d | baseline start none → 2019-04-29 08:00; baseline finish none → 2019-04-29 09:00 |
| 67 | Status Meeting 11 |  |  |  |  | 47.92d → 62.67d | baseline start none → 2019-05-06 08:00; baseline finish none → 2019-05-06 09:00 |
| 68 | Status Meeting 12 |  |  |  |  | 42.92d → 57.67d | baseline start none → 2019-05-13 08:00; baseline finish none → 2019-05-13 09:00 |
| 69 | Status Meeting 13 |  |  |  |  | 37.92d → 52.67d | baseline start none → 2019-05-20 08:00; baseline finish none → 2019-05-20 09:00 |
| 70 | Status Meeting 14 |  |  |  |  | 32.92d → 47.67d | resources Brad Sutton; Eva Corets; Jane Clayton; Judy Lew; Florian Voss → none |

| ID | Task | Total float | Other |
| --- | --- | --- | --- |
| 71 | Status Meeting 15 | 27.93d → 42.67d | resources Brad Sutton; Eva Corets; Jane Clayton; Judy Lew; Florian Voss → none |
| 72 | Status Meeting 16 | 22.93d → 37.67d | resources Brad Sutton; Eva Corets; Jane Clayton; Judy Lew; Florian Voss → none |
| 73 | Status Meeting 17 | 17.93d → 32.67d | resources Brad Sutton; Eva Corets; Jane Clayton; Judy Lew; Florian Voss → none |
| 74 | Status Meeting 18 | 12.93d → 27.68d | resources Brad Sutton; Eva Corets; Jane Clayton; Judy Lew; Florian Voss → none |
| 75 | Status Meeting 19 | 7.92d → 22.68d | resources Brad Sutton; Eva Corets; Jane Clayton; Judy Lew; Florian Voss → none |
| 76 | Status Meeting 20 | 2.92d → 17.68d | resources Brad Sutton; Eva Corets; Jane Clayton; Judy Lew; Florian Voss → none |

## Version 8 (data date 2019-05-17, saved 2018-10-02, file Tailspin Remote Drone 12.mpp)

Last finish 2019-06-13 → 2019-06-24 (+11d). Complete tasks 29 → 40.

Changed:

| ID | Task | Start | Finish | Duration | Complete | Total float |
| --- | --- | --- | --- | --- | --- | --- |
| 28 | **Design** |  | 2019-03-26 15:00 → 2019-03-26 17:00 A | 24.5d → 24.75d | 23% → 100% | -10.25d → none |
| 31 | Design Document |  | 2019-03-12 12:00 A |  | 25% → 100% | -13.88d → none |
| 32 | Proof of Concept | 2019-03-12 13:00 → 2019-03-11 08:00 A (-1d) | 2019-03-26 12:00 → 2019-03-22 17:00 A (-4d) |  | 0% → 100% | -13.88d → none |
| 33 | Final Design Selection | 2019-03-26 13:00 → 2019-03-25 08:00 A (-1d) | 2019-03-26 15:00 → 2019-03-26 17:00 A | 2h → 2d | 0% → 100% | -13.88d → none |
| 34 | Design complete | 2019-03-26 15:00 → 2019-03-26 17:00 A | 2019-03-26 15:00 → 2019-03-26 17:00 A |  | 0% → 100% | -13.88d → none |
| 35 | **Product Development** | 2019-03-26 15:00 → 2019-03-26 17:00 A | 2019-05-07 14:00 → 2019-05-15 17:00 A (+8d) | 29.88d → 36d | 0% → 100% | -13.88d → none |
| 36 | Product development begins | 2019-03-26 15:00 → 2019-03-26 17:00 A | 2019-03-26 15:00 → 2019-03-26 17:00 A |  | 0% → 100% | -13.88d → none |
| 37 | Initial Prototype | 2019-04-01 14:00 → 2019-03-27 08:00 A (-5d) | 2019-04-08 14:00 → 2019-04-11 17:00 A (+3d) | 1w → 12d | 0% → 100% | -13.88d → none |
| 38 | Internal Testing | 2019-04-08 14:00 → 2019-04-12 08:00 A (+4d) | 2019-04-22 14:00 → 2019-05-01 17:00 A (+9d) | 2w → 14d | 0% → 100% | -13.88d → none |
| 39 | Raw Materials List | 2019-04-22 14:00 → 2019-05-02 08:00 A (+10d) | 2019-04-23 14:00 → 2019-05-02 17:00 A (+9d) |  | 0% → 100% | -13.88d → none |
| 40 | Parts Designation | 2019-04-23 14:00 → 2019-05-03 08:00 A (+10d) | 2019-05-07 14:00 → 2019-05-15 17:00 A (+8d) | 2w → 1.8w | 0% → 100% | -13.88d → none |
| 41 | Product development complete | 2019-05-07 14:00 → 2019-05-15 17:00 A (+8d) | 2019-05-07 14:00 → 2019-05-15 17:00 A (+8d) |  | 0% → 100% | -13.88d → none |
| 42 | **Production Planning** | 2019-05-07 14:00 → 2019-05-15 17:00 A (+8d) | 2019-05-20 16:00 → 2019-05-30 09:00 (+10d) | 9.25d → 9.12d | 0% → 41% | -13.88d → 0d |
| 43 | Production planning begins | 2019-05-07 14:00 → 2019-05-15 17:00 A (+8d) | 2019-05-07 14:00 → 2019-05-15 17:00 A (+8d) |  | 0% → 100% | -13.88d → none |
| 44 | High-level Production Plan | 2019-05-07 14:00 → 2019-05-16 08:00 A (+9d) | 2019-05-14 14:00 → 2019-05-22 16:00 (+8d) | 5d → 4.88d | 0% → 77% | -13.88d → 0d |
| 45 | Resource Planning | 2019-05-14 14:00 → 2019-05-22 16:00 (+8d) | 2019-05-17 14:00 → 2019-05-28 16:00 (+11d) |  |  | -13.88d → 0d |
| 46 | Quality Control Design | 2019-05-17 14:00 → 2019-05-28 16:00 (+11d) | 2019-05-20 14:00 → 2019-05-29 16:00 (+9d) |  |  | -13.88d → 0d |
| 47 | Final Production Plan Approval | 2019-05-20 14:00 → 2019-05-29 16:00 (+9d) | 2019-05-20 16:00 → 2019-05-30 09:00 (+10d) |  |  | -13.88d → 0d |
| 48 | Production planning complete | 2019-05-20 16:00 → 2019-05-30 09:00 (+10d) | 2019-05-20 16:00 → 2019-05-30 09:00 (+10d) |  |  | -13.88d → 0d |
| 49 | **Marketing** | 2019-05-20 16:00 → 2019-05-30 09:00 (+10d) | 2019-06-13 15:24 → 2019-06-24 08:24 (+11d) |  |  | -12.62d → 0d |
| 50 | Marketing phase begins | 2019-05-20 16:00 → 2019-05-30 09:00 (+10d) | 2019-05-20 16:00 → 2019-05-30 09:00 (+10d) |  |  | -12.62d → 0d |
| 51 | Marketing Strategy Development | 2019-05-20 16:00 → 2019-05-30 09:00 (+10d) | 2019-05-21 15:24 → 2019-05-31 08:24 (+10d) | 1.18d → 1.05d |  | -12.62d → 0d |
| 52 | Marketing Plan Development and Approval | 2019-05-21 15:24 → 2019-05-31 08:24 (+10d) | 2019-05-22 15:24 → 2019-06-03 08:24 (+12d) |  |  | -11.8d → 0d |
| 53 | Marketing Materials | 2019-05-22 15:24 → 2019-06-03 08:24 (+12d) | 2019-06-13 15:24 → 2019-06-24 08:24 (+11d) |  |  | -11.8d → 0d |
| 54 | Marketing phase complete | 2019-06-13 15:24 → 2019-06-24 08:24 (+11d) | 2019-06-13 15:24 → 2019-06-24 08:24 (+11d) |  |  | -11.8d → 0d |
